# caMOD 2.2

Schedule from MS Project, 2007-09-28 to 2008-04-30.
SAIC

## Calendars

- Standard: Mon-Fri 08:00-12:00, 13:00-17:00; Sat-Sun off.

## Resources

| Resource |
| --- |
| GuruswamiS |
| NCICB |
| Anand |
| Ulli |
| QA |
| Sima |
| DBA |
| 2nd Resource |
| Sima |
| Srini |
| Grid Resource |
| App Support |
| Systems |
| Jill |

## Schedule

| ID | WBS | Task | Type | Duration | Start | Finish | Predecessors | Total slack | Free slack | Resources | Work |
| --- | --- | --- | --- | --- | --- | --- | --- | --- | --- | --- | --- |
| 1 | 1 | **caMOD 2.4 Release** |  | 154d | 2007-09-28 | 2008-04-30 |  | 0d |  |  | 1992h |
| 2 | 1.1 | **Inception Phase** |  | 16d | 2007-09-28 | 2007-10-19 |  | 0d |  |  | 48h |
| 3 | 1.1.1 | Use Case and Design Doc (caBIG template) |  | 2w | 2007-09-28 | 2007-10-11 |  | 0d |  | Sima [50%] | 40h |
| 4 | 1.1.2 | Review use cases / design with the "Review Board" |  | 6d | 2007-10-12 | 2007-10-19 | 3 | 0d |  | Sima | 8h |
| 5 | 1.2 | Milestone: Completed Design document | milestone | 0d | 2007-10-19 | 2007-10-19 | 4 | 0d |  | Anand |  |
| 6 | 1.3 | **Elaboration Phase** |  | 21d | 2007-10-22 | 2007-11-19 |  | 0d |  |  | 168h |
| 7 | 1.3.1 | Incorporate changes to the Object Model |  | 2d | 2007-10-22 | 2007-10-23 | 5 | 0d |  | Ulli | 16h |
| 8 | 1.3.2 | Make code changes due to Object Model changes |  | 5d | 2007-10-24 | 2007-10-30 | 7 | 0d |  | Sima | 40h |
| 9 | 1.3.3 | Milestone: Soft Freeze Object Model |  | 2d | 2007-10-31 | 2007-11-01 | 8 | 0d |  | Sima | 16h |
| 10 | 1.3.4 | Round Trip, Import XMI into EA |  | 2d | 2007-11-02 | 2007-11-05 | 9 | 21d | 0d | Ulli | 16h |
| 11 | 1.3.5 | Register Model in caDSR |  | 10d | 2007-11-06 | 2007-11-19 | 10 | 21d |  | Ulli | 80h |
| 12 | 1.4 | Milestone: Model Registered in CADSR | milestone | 0d | 2007-09-28 | 2007-09-28 |  | 58d |  |  |  |
| 13 | 1.5 | **iteration 1:** |  | 138d | 2007-10-22 | 2008-04-30 |  | 0d |  |  | 1776h |
| 14 | 1.5.1 | **EVSTree Application-side work** |  | 33d | 2007-11-02 | 2007-12-18 |  | 0d |  | Sima | 792h |
| 15 | 1.5.1.1 | **Implementation and Testing** |  | 33d | 2007-11-02 | 2007-12-18 |  | 0d |  | Sima | 528h |
| 16 | 1.5.1.1.1 | Letting a user add and view staining methods that are not part of the vocabulary; affects old and new entries |  | 1w | 2007-11-02 | 2007-11-08 | 9 | 0d |  | Sima | 40h |
| 17 | 1.5.1.1.2 | Annoyances with EVS organ tree |  | 4w | 2007-11-09 | 2007-12-06 | 16 | 0d |  | Sima | 160h |
| 18 | 1.5.1.1.3 | Selecting search results in tree causes HTTP 404 Error |  | 3d | 2007-12-07 | 2007-12-11 | 17 | 0d |  | Sima | 24h |
| 19 | 1.5.1.1.4 | Crash - when trying to select search result page crashes |  | 1w | 2007-12-12 | 2007-12-18 | 18 | 0d |  | Sima | 40h |
| 20 | 1.5.2 | **caMOD - caELMIR Integration Tasks** |  | 28d | 2007-12-19 | 2008-01-25 |  | 0d |  |  | 224h |
| 21 | 1.5.2.1 | Implement Therapy Screen for caELMIR data |  | 2w | 2007-12-19 | 2008-01-01 | 19 | 0d |  | Sima | 80h |
| 25 | 1.5.3 | **Admin Features and Misc bugs** |  | 9d | 2008-01-28 | 2008-02-07 |  | 0d |  |  | 72h |
| 26 | 1.5.3.1 | Do not delete EnvironmentalFactor objects - instead reuse and leave in DB |  | 2d | 2008-01-28 | 2008-01-29 |  | 0d |  | Sima | 16h |
| 27 | 1.5.3.2 | Editors do not receive assignment emails |  | 1w | 2008-01-30 | 2008-02-05 | 26 | 0d |  | Sima | 40h |
| 28 | 1.5.3.3 | data conversion and html code result in funny signs in text |  | 2d | 2008-02-06 | 2008-02-07 | 27 | 0d |  | Sima | 16h |

| ID | WBS | Task | Type | Duration | Start | Finish | Predecessors | Total slack | Free slack | Resources | Work |
| --- | --- | --- | --- | --- | --- | --- | --- | --- | --- | --- | --- |
| 29 | 1.5.4 | **Remote API / Grid** |  | 35d | 2008-02-08 | 2008-03-27 |  | 0d |  |  | 280h |
| 30 | 1.5.4.1 | Leverage caCORE 3.2 for remote API |  | 1w | 2008-02-08 | 2008-02-14 | 28 | 0d |  | Sima | 40h |
| 31 | 1.5.4.2 | Remote API - Redo API to 1.0 of Tool Kit |  | 2w | 2008-02-15 | 2008-02-28 | 30 | 0d |  | Sima | 80h |
| 32 | 1.5.4.3 | Make caMod available in the grid (production) |  | 1w | 2008-02-29 | 2008-03-06 | 31 | 0d |  | Sima | 40h |
| 33 | 1.5.4.4 | Map API to latest OM (2.4) |  | 2w | 2008-03-07 | 2008-03-20 | 32 | 0d |  | Sima | 80h |
| 34 | 1.5.4.5 | Make only edited-approved models available through API |  | 1w | 2008-03-21 | 2008-03-27 | 33 | 0d |  | Sima | 40h |
| 35 | 1.5.5 | **Testing** |  | 138d | 2007-10-22 | 2008-04-30 |  | 0d |  |  | 408h |
| 36 | 1.5.5.1 | Deploy iteration on DEV Server |  | 2d | 2008-03-28 | 2008-03-31 | 34 | 0d |  | Sima | 16h |
| 37 | 1.5.5.2 | Test on DEV tier |  | 1w | 2008-04-01 | 2008-04-07 | 36 | 0d |  | Ulli; Sima | 80h |
| 38 | 1.5.5.3 | **Transition Phase** |  | 138d | 2007-10-22 | 2008-04-30 |  | 0d |  |  | 312h |
| 39 | 1.5.5.3.1 | **QA** |  | 10d | 2007-10-22 | 2007-11-02 | 5 | 133d |  | QA | 160h |
| 40 | 1.5.5.3.1.1 | Finalize Testplan |  | 1w | 2007-10-22 | 2007-10-26 | 5 | 133d | 0d | QA | 40h |
| 41 | 1.5.5.3.1.2 | Finalize Test Cases |  | 1w | 2007-10-29 | 2007-11-02 | 40 | 133d |  | QA | 40h |
| 42 | 1.5.5.3.2 | **Deploy** |  | 17d | 2008-04-08 | 2008-04-30 |  | 0d |  |  | 152h |
| 43 | 1.5.5.3.2.1 | **QA Server Deployment** |  | 10d | 2008-04-08 | 2008-04-21 | 37 | 0d |  |  | 80h |
| 44 | 1.5.5.3.2.1.1 | QA Testing |  | 2w | 2008-04-08 | 2008-04-21 |  | 0d |  | QA | 80h |
| 45 | 1.5.5.3.2.2 | **Staging Server Deployment** |  | 5d | 2008-04-22 | 2008-04-28 | 44 | 0d |  |  | 40h |
| 46 | 1.5.5.3.2.2.1 | Staging Testing |  | 1w | 2008-04-22 | 2008-04-28 |  | 0d |  | Ulli | 40h |
| 47 | 1.5.5.3.2.3 | **Production Server Deployment** |  | 2d | 2008-04-29 | 2008-04-30 | 46 | 0d |  | Sima | 32h |
| 48 | 1.5.5.3.2.3.1 | Production Verification |  | 2d | 2008-04-29 | 2008-04-30 |  | 0d |  | Ulli | 16h |
| 49 | 1.5.5.4 | caMOD 2.4 - Closeout | milestone | 0d | 2008-04-30 | 2008-04-30 | 48 | 0d |  |  |  |
